# Infraestructura - Centro Educativo

Schedule from ProjectLibre, 2022-05-19 to 2023-02-10.

## Calendars

- Estandar: Mon-Fri 08:00-12:00, 13:00-17:00; Sat-Sun off.

## Resources

| Resource | Rate | Cost per use |
| --- | --- | --- |
| No Asignado |  |  |
| Gerente | 50000 |  |
| Ingeniero 1 | 11500 |  |
| Ingeniero 2 | 11500 |  |
| Ingeniero Civil | 13500 |  |
| Arquitecto | 9250 |  |
| Ingeniero ambiental | 10500 |  |
| Asistente 1 | 7000 |  |
| Asistente 2 | 7000 |  |
| Asistente 3 | 7000 |  |
| Computador 1 |  | 2500000 |
| Computador 2 |  | 2500000 |
| Computador 3 |  | 2500000 |
| Empresa de Mercadeo |  | 2000000 |
| Empresa analistas financieros |  | 2600000 |
| Buffet Abogados |  | 3200000 |
| Empresa de estudios topográficos |  | 2200000 |
| Empresa eléctrica pública |  | 1700000 |
| Empresa eléctrica privada |  | 2500000 |
| Empresa constructora |  | 1200000000 |
| Empresa auditora |  | 2300000 |
| Empresa desechos local |  | 1500000 |

## Schedule

| ID | WBS | Task | Duration | Start | Finish | Predecessors | Resources |
| --- | --- | --- | --- | --- | --- | --- | --- |
| 1 | 1 | **Centro Educativo - Infraestructura** | 191.33d | 2022-05-19 | 2023-02-10 |  |  |
| 2 | 1.1 | **1. PREFACTIBILIDAD** | 25.5d | 2022-05-19 | 2022-06-23 |  |  |
| 3 | 1.1.1 | 1.1 Estudio de la población objetivo | 6d | 2022-05-19 | 2022-05-26 |  | Ingeniero 1; Asistente 1; Empresa de Mercadeo; Computador 1 |
| 4 | 1.1.2 | 1.2 Estudios sobre programas a ofertar | 2.5d | 2022-05-19 | 2022-05-23 | 3SS | Ingeniero 1; Asistente 1 |
| 5 | 1.1.3 | 1.3 Estudio de recursos necesarios | 3d | 2022-05-19 | 2022-05-23 | 4SS | Gerente; Ingeniero 2; Asistente 2 |
| 6 | 1.1.4 | 1.4 Estudios de alcance del proyecto | 1d | 2022-05-27 | 2022-05-27 | 3 | Gerente; Ingeniero 1; Asistente 3; Computador 3 |
| 7 | 1.1.5 | 1.5 Estudios sobre el impacto social | 1d | 2022-05-27 | 2022-05-27 | 6SS | Ingeniero 2; Asistente 1 |
| 8 | 1.1.6 | 1.6 Estudios sobre el impacto ambiental | 1d | 2022-05-27 | 2022-05-27 | 7SS | Ingeniero ambiental |
| 9 | 1.1.7 | 1.7 Estudios de la localizacion | 2d | 2022-05-30 | 2022-05-31 | 7 | Ingeniero 2; Ingeniero Civil |
| 10 | 1.1.8 | 1.8 Propuestas de alternativas | 6d | 2022-06-01 | 2022-06-08 | 9 | Asistente 1; Gerente; Ingeniero 1; Ingeniero 2 |
| 11 | 1.1.9 | 1.9 Plano general de la planta física | 5d | 2022-06-09 | 2022-06-15 | 10 | Arquitecto |
| 12 | 1.1.10 | 1.10 Proyección general de costos de cursos ofertados | 1d | 2022-06-16 | 2022-06-16 | 11 | Gerente; Asistente 3; Empresa analistas financieros |
| 13 | 1.1.11 | 1.11 Presupuesto para la construcción del centro educativo | 1.67d | 2022-06-17 | 2022-06-20 | 12 | Gerente; Asistente 1 |
| 14 | 1.1.12 | 1.12 Presupuestos para el abastecimiento del centro | 1.25d | 2022-06-17 | 2022-06-20 | 13SS | Gerente; Ingeniero 2; Asistente 2 |
| 15 | 1.1.13 | 1.13 Presupuestos de funcionamiento para un período no inferior a cinco años, | 2.5d | 2022-06-17 | 2022-06-21 | 14SS | Gerente |
| 16 | 1.1.14 | 1.14 Descripción de la planta física | 0.5d | 2022-06-21 | 2022-06-21 | 15 | Arquitecto; Ingeniero Civil |
| 17 | 1.1.15 | 1.15 Descripción de la dotación básica | 0.5d | 2022-06-21 | 2022-06-21 | 16SS | Ingeniero 1; Asistente 1 |
| 18 | 1.1.16 | 1.16 Análisis de Riesgo | 1d | 2022-06-22 | 2022-06-22 | 17 | Ingeniero 2; Asistente 2 |
| 19 | 1.1.17 | 1.17 Sensibilidad del proyecto | 0.5d | 2022-06-23 | 2022-06-23 | 18 | Ingeniero 2; Asistente 3 |
| 20 | 1.2 | **2. FACTIBILIDAD+ING. DETALLE** | 36.08d | 2022-06-23 | 2022-08-12 |  |  |
| 21 | 1.2.1 | 2.1 Identificación de requisitos y normativas | 4d | 2022-06-23 | 2022-06-29 | 19 | Buffet Abogados |
| 22 | 1.2.2 | 2.2 NTC 4595 - Planeamiento y diseño de instalaciones y ambientes escolares | 2d | 2022-06-23 | 2022-06-27 | 21SS |  |
| 23 | 1.2.3 | 2.3 NTC 4596 - Señalizacion para instalaciones y amabientes escolares | 2d | 2022-06-23 | 2022-06-27 | 22SS |  |
| 24 | 1.2.4 | 2.4 Certificaciones de disponibilidad de servicio del operador de la red correspondiente | 2d | 2022-06-29 | 2022-07-01 | 21 | Empresa eléctrica pública |
| 25 | 1.2.5 | 2.5 Especificación de estándares o criterios adoptados para definir las condiciones de la planta física y de la dotación básica | 0.67d | 2022-07-01 | 2022-07-04 | 24 | Arquitecto; Asistente 3; Ingeniero 1; Ingeniero Civil |
| 26 | 1.2.6 | 2.6 Concepto de uso del suelo | 0.33d | 2022-07-04 | 2022-07-04 | 25 | Gerente; Ingeniero Civil; Empresa de estudios topográficos |
| 27 | 1.2.7 | 2.7 Concepto sanitario | 1d | 2022-07-04 | 2022-07-05 | 26SS | Empresa desechos local |
| 28 | 1.2.8 | 2.8 Identificación de riesgos | 1.5d | 2022-07-05 | 2022-07-06 | 27 | Asistente 1; Ingeniero 1 |
| 29 | 1.2.9 | 2.9 Evaluación de riesgos | 1d | 2022-07-06 | 2022-07-07 | 28 | Ingeniero 1; Asistente 2; Computador 2; Gerente |
| 30 | 1.2.10 | 2.10 Análisis de riesgos y amenazas | 0.5d | 2022-07-07 | 2022-07-08 | 29 | Asistente 3; Ingeniero 2 |
| 31 | 1.2.11 | 2.11 Medición y control de riesgos | 0.5d | 2022-07-08 | 2022-07-08 | 30 | Asistente 3; Ingeniero 2 |
| 32 | 1.2.12 | 2.12 Análisis geotécnico de cimentación | 0.75d | 2022-07-08 | 2022-07-11 | 31 | Empresa constructora; Ingeniero Civil; Ingeniero ambiental |
| 33 | 1.2.13 | 2.13 Presupuesto y proyecciones de la alternativa seleccionada | 0.67d | 2022-07-11 | 2022-07-12 | 32 | Asistente 2; Gerente |
| 34 | 1.2.14 | 2.14 Gestión de predios | 3d | 2022-07-12 | 2022-07-15 | 33 |  |
| 35 | 1.2.15 | 2.15 Licencia de construcción | 3d | 2022-07-15 | 2022-07-20 | 34 |  |
| 36 | 1.2.16 | 2.16 Levantamiento topográfico | 2d | 2022-07-20 | 2022-07-22 | 35 | Ingeniero Civil |
| 37 | 1.2.17 | 2.17 Plan de gestión de diseño | 1d | 2022-07-22 | 2022-07-25 | 36 | Asistente 2; Ingeniero 2 |
| 38 | 1.2.18 | 2.18 Diseño arquitectónico | 5d | 2022-07-25 | 2022-08-01 | 37 | Arquitecto |
| 39 | 1.2.19 | 2.19 Diseño estructural | 5d | 2022-08-01 | 2022-08-08 | 38 | Ingeniero Civil |
| 40 | 1.2.20 | 2.20 Diseño eléctrico | 2d | 2022-08-08 | 2022-08-10 | 39 | Empresa eléctrica privada |
| 41 | 1.2.21 | 2.21 Diseño hidrosanitario | 2d | 2022-08-08 | 2022-08-10 | 40SS |  |
| 42 | 1.2.22 | 2.22 Diseño de comunicaciones y alarmas | 2d | 2022-08-08 | 2022-08-10 | 41SS |  |
| 43 | 1.2.23 | 2.23 Diseño según la comodidad para ambientes escolares (NTC 4595) | 2d | 2022-08-10 | 2022-08-12 | 42 | Arquitecto |
| 44 | 1.2.24 | 2.24 Diseño según la seguridad para ambientes escolares (NTC 4595) | 2d | 2022-08-10 | 2022-08-12 | 43SS | Arquitecto |
| 45 | 1.2.25 | 2.25 Diseño según bioclimática del entorno | 0.5d | 2022-08-12 | 2022-08-12 | 44 | Arquitecto; Ingeniero ambiental |

| ID | WBS | Task | Duration | Start | Finish | Predecessors | Resources |
| --- | --- | --- | --- | --- | --- | --- | --- |
| 46 | 1.3 | **3. CONSTRUCCIÓN** | 112.42d | 2022-08-12 | 2023-01-17 |  |  |
| 47 | 1.3.1 | 3.1 Documentación requerida | 1d | 2022-08-12 | 2022-08-15 | 45 | Asistente 3 |
| 48 | 1.3.2 | 3.2 Trámites ante entidades públicas | 2d | 2022-08-15 | 2022-08-17 | 47 |  |
| 49 | 1.3.3 | 3.3 Revisión urbanismo redes secas y húmedas existentes | 0.5d | 2022-08-17 | 2022-08-18 | 48 | Ingeniero Civil |
| 50 | 1.3.4 | 3.4 Definir proceso constructivo en obra | 2d | 2022-08-18 | 2022-08-22 | 49 |  |
| 51 | 1.3.5 | 3.5 Asignación de recursos financieros | 0.5d | 2022-08-22 | 2022-08-22 | 50 | Gerente |
| 52 | 1.3.6 | 3.6 Adquisición de los terrenos | 1.25d | 2022-08-22 | 2022-08-23 | 51 | Asistente 1; Gerente; Ingeniero 1 |
| 53 | 1.3.7 | 3.7 Adquisición de maquinaria necesaria para construcción | 3d | 2022-08-23 | 2022-08-26 | 52 |  |
| 54 | 1.3.8 | 3.8 Contratación del personal para la obra | 1d | 2022-08-26 | 2022-08-29 | 53 |  |
| 55 | 1.3.9 | 3.9 Establecer campamento (AIU) | 3d | 2022-08-29 | 2022-09-01 | 54 |  |
| 56 | 1.3.10 | 3.10 Excavación y movimiento de tierras | 10d | 2022-09-01 | 2022-09-15 | 55 |  |
| 57 | 1.3.11 | 3.11 Cimentación profunda | 7d | 2022-09-15 | 2022-09-26 | 56 |  |
| 58 | 1.3.12 | 3.12 Vigas de cimentación | 4d | 2022-09-26 | 2022-09-30 | 57 |  |
| 59 | 1.3.13 | 3.13 Control de excavaciones y cimentación | 0.5d | 2022-09-30 | 2022-10-03 | 58 | Empresa auditora |
| 60 | 1.3.14 | 3.14 Control de calidad de materiales | 3d | 2022-10-03 | 2022-10-06 | 59 |  |
| 61 | 1.3.15 | 3.15 Construcción estructural | 20d | 2022-10-06 | 2022-11-03 | 60 |  |
| 62 | 1.3.16 | 3.16 Zapatas en concreto | 5d | 2022-11-03 | 2022-11-10 | 61 |  |
| 63 | 1.3.17 | 3.17 Malla electro soldada | 6d | 2022-11-10 | 2022-11-18 | 62 |  |
| 64 | 1.3.18 | 3.18 Columnas de concreto reforzado | 5d | 2022-11-18 | 2022-11-25 | 63 |  |
| 65 | 1.3.19 | 3.19 Vigas aéreas | 5d | 2022-11-25 | 2022-12-02 | 64 |  |
| 66 | 1.3.20 | 3.20 Control de la construcción | 2d | 2022-12-02 | 2022-12-06 | 65 |  |
| 67 | 1.3.21 | 3.21 Instalaciones hidrosanitarias | 3d | 2022-12-06 | 2022-12-09 | 66 |  |
| 68 | 1.3.22 | 3.22 Instalaciones interiores y exteriores | 5d | 2022-12-09 | 2022-12-16 | 67 |  |
| 69 | 1.3.23 | 3.23 Instalación de pisos y bases | 5d | 2022-12-16 | 2022-12-23 | 68 |  |
| 70 | 1.3.24 | 3.24 Instalación de red eléctrica y de baja tensión | 4d | 2022-12-23 | 2022-12-29 | 69 |  |
| 71 | 1.3.25 | 3.25 Instalación telecomunicaciones | 3d | 2022-12-23 | 2022-12-28 | 70SS |  |
| 72 | 1.3.26 | 3.26 Instalación red de iluminación | 3d | 2022-12-23 | 2022-12-28 | 71SS |  |
| 73 | 1.3.27 | 3.27 Instalaciones de gas | 3d | 2022-12-29 | 2023-01-03 | 70 |  |
| 74 | 1.3.28 | 3.28 Instalación enchapes | 2d | 2023-01-03 | 2023-01-05 | 73 |  |
| 75 | 1.3.29 | 3.29 Instalación del cielo raso y cubierta | 2d | 2023-01-03 | 2023-01-05 | 74SS |  |
| 76 | 1.3.30 | 3.30 Control de productos terminados | 4d | 2023-01-05 | 2023-01-11 | 75 |  |
| 77 | 1.3.31 | 3.31 Plan de ensayos | 1d | 2023-01-11 | 2023-01-12 | 76 | Asistente 2; Ingeniero 2 |
| 78 | 1.3.32 | 3.32 Aseo general de la obra | 2d | 2023-01-12 | 2023-01-16 | 77 |  |
| 79 | 1.3.33 | 3.33 Verificación de cumplimiento de requisitos técnicos | 1d | 2023-01-16 | 2023-01-17 | 78 | Gerente |
| 80 | 1.3.34 | 3.34 Informe final de construcción | 0.67d | 2023-01-17 | 2023-01-17 | 79 | Asistente 3; Gerente; Ingeniero 2 |

| ID | WBS | Task | Duration | Start | Finish | Predecessors | Resources |
| --- | --- | --- | --- | --- | --- | --- | --- |
| 81 | 1.4 | **4. INTERVENTORÍA** | 8.5d | 2023-01-18 | 2023-01-30 |  |  |
| 82 | 1.4.1 | 4.1 Implementación plan de gestión documental | 1d | 2023-01-18 | 2023-01-18 | 80 | Asistente 3; Ingeniero 1 |
| 83 | 1.4.2 | 4.2 Implementación de plan de seguridad educativa | 1d | 2023-01-18 | 2023-01-18 | 82SS | Asistente 3; Ingeniero 2 |
| 84 | 1.4.3 | 4.3 Manejo de la tecnología de información para uso de comunicaciones | 3d | 2023-01-18 | 2023-01-20 | 83SS |  |
| 85 | 1.4.4 | 4.4 Elaboración de documentos de auto-evaluación | 1d | 2023-01-23 | 2023-01-23 | 84 | Asistente 1; Ingeniero 1 |
| 86 | 1.4.5 | 4.5 Evaluación de la ejecución del proyecto según cronograma establecido | 1.5d | 2023-01-24 | 2023-01-25 | 85 | Gerente; Asistente 2 |
| 87 | 1.4.6 | 4.6 Control de costos según presupuesto establecido | 3d | 2023-01-25 | 2023-01-30 | 86 |  |
| 88 | 1.5 | **5. ENTREGA DEL PROYECTO** | 8.83d | 2023-01-30 | 2023-02-10 |  |  |
| 89 | 1.5.1 | 5.1 Evaluación del impacto del proyecto | 1.33d | 2023-01-30 | 2023-01-31 | 87 | Asistente 3; Gerente; Ingeniero 2 |
| 90 | 1.5.2 | 5.2 Liquidación y cierre de contratos | 1.5d | 2023-01-31 | 2023-02-02 | 89 | Gerente |
| 91 | 1.5.3 | 5.3 Cierre de adquisiciones y órdenes de compras | 1.5d | 2023-02-02 | 2023-02-03 | 90 | Gerente |
| 92 | 1.5.4 | 5.4 Cierre contable y financiero del proyecto | 2d | 2023-02-03 | 2023-02-07 | 91 | Gerente |
| 93 | 1.5.5 | 5.5 Acta de finalización | 2.5d | 2023-02-07 | 2023-02-10 | 92 | Asistente 2; Gerente |
